# Movimiento Ecologista

Schedule from MS Project, 2018-05-14 to 2018-08-03, costs in $, A marks actual dates.

## Calendars

- Estándar: Mon-Fri 09:00-13:00, 15:00-19:00; Sat-Sun off.

## Resources

| Resource | Rate |
| --- | --- |
| Líder de proyecto | 190.12 |
| Analista | 147.39 |
| Diseñador | 149.97 |
| Programador 1 | 159.51 |
| Programador 2 | 159.51 |
| Programador 3 | 159.51 |
| Programador 4 | 159.51 |
| Téster | 130.42 |
| Bolígrafo | 3 |
| Computadora (Desgaste de equipo) | 8 |
| Hojas de papel | 1 |
| Internet | 13 |
| Luz | 5 |
| Mobiliario (Desgaste) | 5 |
| Transporte | 20 |

## Schedule

| ID | WBS | Task | Type | Duration | Start | Finish | Predecessors | Complete | Remaining | Actual start | Actual finish | Constraint | Resources | Work | Actual work | Cost | Actual cost |
| --- | --- | --- | --- | --- | --- | --- | --- | --- | --- | --- | --- | --- | --- | --- | --- | --- | --- |
| 1 | 1 | **MPPP** |  | 60d | 2018-05-14 A | 2018-08-03 |  | 98% | 1.3d |  |  |  |  | 551h | 539h | 87,420.48 | 85,551.04 |
| 2 | 1.1 | **Inicio** |  | 1d | 2018-05-14 A | 2018-05-14 A |  | 100% |  |  |  |  |  | 1h | 1h | 222.12 | 222.12 |
| 3 | 1.1.1 | Acta de inicio | manual | 1h | 2018-05-14 A | 2018-05-14 A |  | 100% |  |  |  | start no earlier than 2018-05-14 | Líder de proyecto; Bolígrafo; Hojas de papel; Transporte; Computadora (Desgaste de equipo) | 1h | 1h | 222.12 | 222.12 |
| 4 | 1.1.2 | **Hitos** |  | 0d | 2018-05-14 A | 2018-05-14 A |  | 100% |  |  |  |  |  |  |  |  |  |
| 5 | 1.1.2.1 | Documento de la acta de inicio | milestone, manual | 0d | 2018-05-14 A | 2018-05-14 A |  | 100% |  |  |  |  |  |  |  |  |  |
| 6 | 1.2 | **Planeación** |  | 7d | 2018-05-15 A | 2018-05-23 | 2 | 100% |  |  | 2018-05-22 |  |  | 34h | 34h | 6,585.04 | 6,585.04 |
| 7 | 1.2.1 | Presupuesto | manual | 1d | 2018-05-15 A | 2018-05-15 A | 3 | 100% |  |  |  | finish no earlier than 2018-05-15 | Líder de proyecto; Computadora (Desgaste de equipo) [80%]; Luz [80%]; Mobiliario (Desgaste) [80%] | 8h | 8h | 1,538.95 | 1,538.95 |
| 8 | 1.2.2 | Estudio de roles | manual | 1d | 2018-05-16 A | 2018-05-16 A | 7 | 100% |  |  |  |  | Líder de proyecto; Computadora (Desgaste de equipo); Luz; Mobiliario (Desgaste) | 8h | 8h | 1,538.95 | 1,538.95 |
| 9 | 1.2.3 | Selección del ciclo de vida | manual | 2h | 2018-05-17 A | 2018-05-17 A | 8 | 100% |  |  |  |  | Líder de proyecto; Computadora (Desgaste de equipo); Luz; Mobiliario (Desgaste) | 2h | 2h | 398.24 | 398.24 |
| 10 | 1.2.4 | Declaración del alcance | manual | 2h | 2018-05-18 A | 2018-05-18 A | 9 | 100% |  |  |  |  | Líder de proyecto; Computadora (Desgaste de equipo); Luz; Mobiliario (Desgaste) | 2h | 2h | 398.24 | 398.24 |
| 11 | 1.2.5 | Estructura de desglose de trabajo (EDT) | manual | 1d | 2018-05-21 A | 2018-05-21 A | 10 | 100% |  |  |  | start no earlier than 2018-05-21 | Líder de proyecto; Computadora (Desgaste de equipo) [200%]; Luz [200%]; Mobiliario (Desgaste) [200%]; Internet [200%] | 8h | 8h | 1,551.95 | 1,551.95 |
| 12 | 1.2.6 | Matriz de comunicación | manual | 6h | 2018-05-22 A | 2018-05-22 A | 11 | 100% |  |  |  | start no earlier than 2018-05-22 | Líder de proyecto; Computadora (Desgaste de equipo); Luz; Mobiliario (Desgaste) | 6h | 6h | 1,158.71 | 1,158.71 |
| 13 | 1.2.7 | **Hitos** |  | 0d | 2018-05-23 | 2018-05-23 |  | 100% |  | 2018-05-15 | 2018-05-15 |  |  |  |  |  |  |
| 14 | 1.2.7.1 | Documento presupuesto | milestone, manual | 0d | 2018-05-15 A | 2018-05-15 A |  | 100% |  |  |  |  |  |  |  |  |  |
| 15 | 1.2.7.2 | Documento estudio de roles | milestone, manual | 0d | 2018-05-15 A | 2018-05-15 A |  | 100% |  |  |  |  |  |  |  |  |  |
| 16 | 1.2.7.3 | Documento selección del ciclo de vida | milestone, manual | 0d | 2018-05-15 A | 2018-05-15 A |  | 100% |  |  |  |  |  |  |  |  |  |
| 17 | 1.2.7.4 | Documento declaracion de alcance | milestone, manual | 0d | 2018-05-15 A | 2018-05-15 A |  | 100% |  |  |  |  |  |  |  |  |  |
| 18 | 1.2.7.5 | Documento EDT | milestone, manual | 0d | 2018-05-15 A | 2018-05-15 A |  | 100% |  |  |  |  |  |  |  |  |  |
| 19 | 1.2.7.6 | Documento plan de comunicación | milestone, manual | 0d | 2018-05-15 A | 2018-05-15 A |  | 100% |  |  |  |  |  |  |  |  |  |
| 20 | 1.3 | **Análisis** |  | 7d | 2018-05-24 A | 2018-06-01 | 6 | 70% | 2.1d |  |  |  |  | 40h | 28h | 6,077.9 | 4,301.46 |
| 21 | 1.3.1 | Análisis de provedores | manual | 16h | 2018-05-24 A | 2018-05-25 | 12 | 25% | 12h |  |  |  | Analista; Computadora (Desgaste de equipo) [300%]; Internet [300%]; Luz [300%]; Mobiliario (Desgaste) [300%] | 16h | 4h | 2,420.25 | 643.81 |
| 22 | 1.3.2 | Evaluar provedores de requerimientos | manual | 4h | 2018-05-28 A | 2018-05-28 A | 21 | 100% |  |  |  |  | Analista; Bolígrafo [200%]; Hojas de papel [200%] | 4h | 4h | 593.57 | 593.57 |
| 23 | 1.3.3 | Selección de la técnica de recolección de datos | manual | 2h | 2018-05-29 A | 2018-05-29 A | 22 | 100% |  |  |  |  | Analista; Computadora (Desgaste de equipo); Luz; Mobiliario (Desgaste) | 2h | 2h | 312.78 | 312.78 |
| 24 | 1.3.4 | Aplicación de a técnica de recolección de datos seleccionada | manual | 2h | 2018-05-30 A | 2018-05-30 A | 23 | 100% |  |  |  |  | Analista; Bolígrafo; Computadora (Desgaste de equipo); Hojas de papel; Internet; Luz; Mobiliario (Desgaste) | 2h | 2h | 329.78 | 329.78 |
| 25 | 1.3.5 | Especificación de requisitos de software (ERS) | manual | 2d | 2018-05-31 A | 2018-06-01 A | 24 | 100% |  |  |  |  | Diseñador; Bolígrafo [200%]; Computadora (Desgaste de equipo) [200%]; Hojas de papel [200%]; Luz [200%]; Mobiliario (Desgaste) [200%] | 16h | 16h | 2,421.52 | 2,421.52 |

| ID | WBS | Task | Type | Duration | Start | Finish | Predecessors | Complete | Actual start | Actual finish | Resources | Work | Actual work | Cost | Actual cost |
| --- | --- | --- | --- | --- | --- | --- | --- | --- | --- | --- | --- | --- | --- | --- | --- |
| 26 | 1.3.6 | **Hitos** |  | 0d | 2018-06-01 | 2018-06-01 |  | 100% | 2018-05-25 | 2018-05-25 |  |  |  |  |  |
| 27 | 1.3.6.1 | Documento análisis de provedores | milestone, manual | 0d | 2018-05-25 A | 2018-05-25 A |  | 100% |  |  |  |  |  |  |  |
| 28 | 1.3.6.2 | Documento provedores de requerimiento | milestone, manual | 0d | 2018-05-25 A | 2018-05-25 A |  | 100% |  |  |  |  |  |  |  |
| 29 | 1.3.6.3 | Documento selección de la técnica de recolección de datos | milestone, manual | 0d | 2018-05-25 A | 2018-05-25 A |  | 100% |  |  |  |  |  |  |  |
| 30 | 1.3.6.4 | Documento aplicación de la técnica de recolección de datos seleccionada | milestone, manual | 0d | 2018-05-25 A | 2018-05-25 A |  | 100% |  |  |  |  |  |  |  |
| 31 | 1.3.6.5 | Documento ERS | milestone, manual | 0d | 2018-05-25 A | 2018-05-25 A |  | 100% |  |  |  |  |  |  |  |
| 32 | 1.4 | **Diseño** |  | 7d | 2018-06-04 A | 2018-06-12 A | 20 | 100% |  |  |  | 48h | 48h | 7,283.54 | 7,283.54 |
| 33 | 1.4.1 | Diagramas UML | manual | 1d | 2018-06-04 A | 2018-06-04 A | 25 | 100% |  |  | Diseñador; Computadora (Desgaste de equipo) [200%]; Luz [200%]; Mobiliario (Desgaste) [200%] | 8h | 8h | 1,217.76 | 1,217.76 |
| 34 | 1.4.2 | Diagramas de la Base de datos | manual | 20h | 2018-06-05 A | 2018-06-07 A | 33 | 100% |  |  | Diseñador; Computadora (Desgaste de equipo) [200%]; Luz [200%]; Mobiliario (Desgaste) [200%]; Internet [200%] | 20h | 20h | 3,030.39 | 3,030.39 |
| 35 | 1.4.3 | Mapa de navegación | manual | 4h | 2018-06-08 A | 2018-06-08 A | 34 | 100% |  |  | Computadora (Desgaste de equipo); Diseñador; Luz; Mobiliario (Desgaste) | 4h | 4h | 617.88 | 617.88 |
| 36 | 1.4.4 | Bocetos | manual | 2d | 2018-06-11 A | 2018-06-12 A | 35 | 100% |  |  | Computadora (Desgaste de equipo); Luz; Mobiliario (Desgaste); Diseñador | 16h | 16h | 2,417.51 | 2,417.51 |
| 37 | 1.4.5 | **Hitos** |  | 0d | 2018-06-12 A | 2018-06-12 A |  | 100% |  |  |  |  |  |  |  |
| 38 | 1.4.5.1 | Documento diagramas UML | milestone, manual | 0d | 2018-06-12 A | 2018-06-12 A |  | 100% |  |  |  |  |  |  |  |
| 39 | 1.4.5.2 | Documento diagramas de la BD | milestone, manual | 0d | 2018-06-12 A | 2018-06-12 A |  | 100% |  |  |  |  |  |  |  |
| 40 | 1.4.5.3 | Documento mapa de navegación | milestone, manual | 0d | 2018-06-12 A | 2018-06-12 A |  | 100% |  |  |  |  |  |  |  |
| 41 | 1.4.5.4 | Imágenes de los bocetos | milestone, manual | 0d | 2018-06-12 A | 2018-06-12 A |  | 100% |  |  |  |  |  |  |  |
| 42 | 1.5 | **Codificación** |  | 25d | 2018-06-13 A | 2018-07-17 A | 32 | 100% |  |  |  | 328h | 328h | 52,871.28 | 52,871.28 |
| 43 | 1.5.1 | Base de datos | manual | 2d | 2018-06-13 A | 2018-06-14 A | 36 | 100% |  |  | Programador 1; Computadora (Desgaste de equipo); Internet; Luz; Mobiliario (Desgaste) | 16h | 16h | 2,583.16 | 2,583.16 |
| 44 | 1.5.2 | Maquetación | manual | 2d | 2018-06-15 A | 2018-06-18 A | 43 | 100% |  |  | Programador 4; Computadora (Desgaste de equipo); Internet; Luz; Mobiliario (Desgaste) | 16h | 16h | 2,583.16 | 2,583.16 |
| 45 | 1.5.3 | **Frontend** |  | 10d | 2018-06-19 A | 2018-07-02 A |  | 100% |  |  |  | 160h | 160h | 25,924.6 | 25,924.6 |
| 46 | 1.5.3.1 | Index | manual | 3d | 2018-06-28 A | 2018-07-02 A | 47, 48, 49 | 100% |  |  | Programador 2; Computadora (Desgaste de equipo) [300%]; Internet [300%]; Luz [300%]; Mobiliario (Desgaste) [300%] | 24h | 24h | 3,921.24 | 3,921.24 |
| 47 | 1.5.3.2 | Invernadero | manual | 3d | 2018-06-25 A | 2018-06-27 A | 51 | 100% |  |  | Programador 2; Computadora (Desgaste de equipo); Internet; Luz; Mobiliario (Desgaste) | 24h | 24h | 3,828.24 | 3,828.24 |
| 48 | 1.5.3.3 | Campañas | manual | 2d | 2018-06-21 A | 2018-06-22 A | 50 | 100% |  |  | Programador 1; Computadora (Desgaste de equipo); Internet; Luz; Mobiliario (Desgaste) | 16h | 16h | 2,552.16 | 2,552.16 |
| 49 | 1.5.3.4 | Socios | manual | 2d | 2018-06-25 A | 2018-06-26 A | 52 | 100% |  |  | Programador 3; Computadora (Desgaste de equipo); Internet; Luz; Mobiliario (Desgaste) | 16h | 16h | 2,552.16 | 2,552.16 |
| 50 | 1.5.3.5 | Comentarios | manual | 2d | 2018-06-19 A | 2018-06-20 A | 44 | 100% |  |  | Programador 1; Computadora (Desgaste de equipo) [200%]; Internet [200%]; Luz [200%]; Mobiliario (Desgaste) [200%] | 16h | 16h | 2,614.16 | 2,614.16 |
| 51 | 1.5.3.6 | FAQs | manual | 2d | 2018-06-20 A | 2018-06-21 A | 44 | 100% |  |  | Programador 2; Computadora (Desgaste de equipo) [200%]; Internet [200%]; Luz [200%]; Mobiliario (Desgaste) [200%] | 16h | 16h | 2,614.16 | 2,614.16 |
| 52 | 1.5.3.7 | ¿Quiénes somos? | manual | 2d | 2018-06-21 A | 2018-06-22 A | 44 | 100% |  |  | Programador 3; Computadora (Desgaste de equipo) [200%]; Internet [200%]; Luz [200%]; Mobiliario (Desgaste) [200%] | 16h | 16h | 2,614.16 | 2,614.16 |
| 53 | 1.5.3.8 | Login/Registro | manual | 2d | 2018-06-21 A | 2018-06-22 A | 44 | 100% |  |  | Programador 4; Computadora (Desgaste de equipo) [200%]; Internet [200%]; Luz [200%]; Mobiliario (Desgaste) [200%] | 16h | 16h | 2,614.16 | 2,614.16 |
| 54 | 1.5.3.9 | Perfil | manual | 2d | 2018-06-25 A | 2018-06-26 A | 53 | 100% |  |  | Programador 4; Computadora (Desgaste de equipo) [200%]; Internet [200%]; Luz [200%]; Mobiliario (Desgaste) [200%] | 16h | 16h | 2,614.16 | 2,614.16 |

| ID | WBS | Task | Type | Duration | Start | Finish | Predecessors | Complete | Remaining | Resources | Work | Actual work | Cost | Actual cost |
| --- | --- | --- | --- | --- | --- | --- | --- | --- | --- | --- | --- | --- | --- | --- |
| 55 | 1.5.4 | **Backend** |  | 10d | 2018-07-04 A | 2018-07-17 A | 45 | 100% |  |  | 136h | 136h | 21,780.36 | 21,780.36 |
| 56 | 1.5.4.1 | Adopciones | manual | 3d | 2018-07-13 A | 2018-07-17 A | 57 | 100% |  | Programador 1; Computadora (Desgaste de equipo); Internet; Luz; Mobiliario (Desgaste) | 24h | 24h | 3,836.24 | 3,836.24 |
| 57 | 1.5.4.2 | Invernaredo | manual | 3d | 2018-07-10 A | 2018-07-12 A | 60 | 100% |  | Programador 2; Computadora (Desgaste de equipo); Internet; Luz; Mobiliario (Desgaste) | 24h | 24h | 3,836.24 | 3,836.24 |
| 58 | 1.5.4.3 | Campañas | manual | 2d | 2018-07-09 A | 2018-07-10 A | 59 | 100% |  | Programador 1; Computadora (Desgaste de equipo); Internet; Luz; Mobiliario (Desgaste) | 16h | 16h | 2,560.16 | 2,560.16 |
| 59 | 1.5.4.4 | Comentarios | manual | 2d | 2018-07-04 A | 2018-07-05 A | 50 | 100% |  | Programador 1; Computadora (Desgaste de equipo); Internet; Luz; Mobiliario (Desgaste) | 16h | 16h | 2,560.16 | 2,560.16 |
| 60 | 1.5.4.5 | FAQs | manual | 2d | 2018-07-06 A | 2018-07-09 A | 51 | 100% |  | Programador 2; Computadora (Desgaste de equipo); Internet; Luz; Mobiliario (Desgaste) | 16h | 16h | 2,560.16 | 2,560.16 |
| 61 | 1.5.4.6 | Usuarios | manual | 3d | 2018-07-09 A | 2018-07-11 A | 62 | 100% |  | Programador 3; Computadora (Desgaste de equipo); Internet; Luz; Mobiliario (Desgaste) | 24h | 24h | 3,836.24 | 3,836.24 |
| 62 | 1.5.4.7 | ¿Quiénes somos? | manual | 2d | 2018-07-04 A | 2018-07-05 A | 52 | 100% |  | Programador 3; Computadora (Desgaste de equipo); Internet; Luz; Mobiliario (Desgaste) | 16h | 16h | 2,560.16 | 2,560.16 |
| 63 | 1.5.5 | **Hitos** |  | 0d | 2018-07-17 A | 2018-07-17 A |  | 100% |  |  |  |  |  |  |
| 64 | 1.5.5.1 | Archivo sql de la base de datos | milestone, manual | 0d | 2018-07-17 A | 2018-07-17 A |  | 100% |  |  |  |  |  |  |
| 65 | 1.5.5.2 | Archivo de maquetación php, css y js | milestone, manual | 0d | 2018-07-17 A | 2018-07-17 A |  | 100% |  |  |  |  |  |  |
| 66 | 1.5.5.3 | Index archivos view, model y controller | milestone, manual | 0d | 2018-07-17 A | 2018-07-17 A |  | 100% |  |  |  |  |  |  |
| 67 | 1.5.5.4 | Invernadero archivos view, model y controller | milestone, manual | 0d | 2018-07-17 A | 2018-07-17 A |  | 100% |  |  |  |  |  |  |
| 68 | 1.5.5.5 | Campañas archivos view, model y controller | milestone, manual | 0d | 2018-07-17 A | 2018-07-17 A |  | 100% |  |  |  |  |  |  |
| 69 | 1.5.5.6 | Socios archivos view, model y controller | milestone, manual | 0d | 2018-07-17 A | 2018-07-17 A |  | 100% |  |  |  |  |  |  |
| 70 | 1.5.5.7 | Comentarios archivos view, model y controller | milestone, manual | 0d | 2018-07-17 A | 2018-07-17 A |  | 100% |  |  |  |  |  |  |
| 71 | 1.5.5.8 | FAQs archivos view, model y controller | milestone, manual | 0d | 2018-07-17 A | 2018-07-17 A |  | 100% |  |  |  |  |  |  |
| 72 | 1.5.5.9 | ¿Quiénes somos? Archivos view, model y controller | milestone, manual | 0d | 2018-07-17 A | 2018-07-17 A |  | 100% |  |  |  |  |  |  |
| 73 | 1.5.5.10 | Login/Registro archivos view, model y controller | milestone, manual | 0d | 2018-07-17 A | 2018-07-17 A |  | 100% |  |  |  |  |  |  |
| 74 | 1.5.5.11 | Usuario archivos view, model y controller | milestone, manual | 0d | 2018-07-17 A | 2018-07-17 A |  | 100% |  |  |  |  |  |  |
| 75 | 1.6 | **Pruebas** |  | 9d | 2018-07-18 A | 2018-07-30 | 42 | 99% | 0d |  | 72h | 72h | 9,483.24 | 9,390.24 |
| 76 | 1.6.1 | Pruebas unitarias | manual | 3d | 2018-07-18 A | 2018-07-20 | 55 | 99% | 0d | Internet; Luz; Mobiliario (Desgaste); Téster; Computadora (Desgaste de equipo) | 24h | 24h | 3,161.08 | 3,130.08 |
| 77 | 1.6.2 | Pruebas de módulo | manual | 4d | 2018-07-23 A | 2018-07-26 | 76 | 99% | 0d | Téster; Computadora (Desgaste de equipo); Internet; Luz; Mobiliario (Desgaste) | 32h | 32h | 4,204.44 | 4,173.44 |
| 78 | 1.6.3 | Pruebas de validacion | manual | 2d | 2018-07-27 A | 2018-07-30 | 77 | 99% | 0d | Téster; Computadora (Desgaste de equipo); Internet; Luz; Mobiliario (Desgaste) | 16h | 16h | 2,117.72 | 2,086.72 |

| ID | WBS | Task | Type | Duration | Start | Finish | Predecessors | Complete | Resources | Work | Actual work | Cost | Actual cost |
| --- | --- | --- | --- | --- | --- | --- | --- | --- | --- | --- | --- | --- | --- |
| 79 | 1.6.4 | **Hitos** |  | 0d | 2018-07-30 A | 2018-07-30 A |  | 100% |  |  |  |  |  |
| 80 | 1.6.4.1 | Documento de pruebas | milestone, manual | 0d | 2018-07-30 A | 2018-07-30 A |  | 100% |  |  |  |  |  |
| 81 | 1.7 | **Implementación** |  | 4d | 2018-07-31 A | 2018-08-03 A | 75 | 100% |  | 24h | 24h | 4,088.88 | 4,088.88 |
| 82 | 1.7.1 | Selección del hosting | manual | 1d | 2018-07-31 A | 2018-07-31 A | 78 | 100% | Computadora (Desgaste de equipo); Internet; Luz; Diseñador; Mobiliario (Desgaste) | 8h | 8h | 1,230.76 | 1,230.76 |
| 83 | 1.7.2 | Subir el sitio web | manual | 4h | 2018-08-01 A | 2018-08-01 A | 82 | 100% | Téster; Computadora (Desgaste de equipo); Internet; Luz; Mobiliario (Desgaste) | 4h | 4h | 552.68 | 552.68 |
| 84 | 1.7.3 | Pruebas de sistema | manual | 1.5d | 2018-08-02 A | 2018-08-03 A | 83 | 100% | Líder de proyecto; Bolígrafo; Hojas de papel; Transporte | 12h | 12h | 2,305.44 | 2,305.44 |
| 85 | 1.7.4 | **Hitos** |  | 0d | 2018-08-03 A | 2018-08-03 A |  | 100% |  |  |  |  |  |
| 86 | 1.7.4.1 | Documento selección de hosting | milestone, manual | 0d | 2018-08-03 A | 2018-08-03 A |  | 100% |  |  |  |  |  |
| 87 | 1.7.4.2 | Documento pruebas de sistema | milestone, manual | 0d | 2018-08-03 A | 2018-08-03 A |  | 100% |  |  |  |  |  |
| 88 | 1.8 | **Cierre del proyecto** |  | 0.25d | 2018-08-03 A | 2018-08-03 A | 81 | 100% |  | 4h | 4h | 808.48 | 808.48 |
| 89 | 1.8.1 | Carta de aceptación | manual | 2h | 2018-08-03 A | 2018-08-03 A | 84 | 100% | Líder de proyecto; Bolígrafo; Hojas de papel; Transporte | 2h | 2h | 404.24 | 404.24 |
| 90 | 1.8.2 | Acta de cierre del proyecto | manual | 2h | 2018-08-03 A | 2018-08-03 A | 84 | 100% | Líder de proyecto; Bolígrafo; Hojas de papel; Transporte | 2h | 2h | 404.24 | 404.24 |
| 91 | 1.8.3 | **Hitos** |  | 0.25d | 2018-08-03 A | 2018-08-03 A |  | 100% |  |  |  |  |  |
| 92 | 1.8.3.1 | Documento carta de aceptación | manual | 0.25d | 2018-08-03 A | 2018-08-03 A |  | 100% |  |  |  |  |  |
| 93 | 1.8.3.2 | Documento acta de cierre del proyecto | manual | 0.25d | 2018-08-03 A | 2018-08-03 A |  | 100% |  |  |  |  |  |
